| Id | Uid | Name | OutlineNumber | OutlineLevel | Summary | Active | Start | Finish | DurationMinutes | DurationText | WorkMinutes | Cost | FixedCost | PercentComplete | Critical | TotalSlackMinutes | Successors | ResourceNames | Predecessors |
| --- | --- | --- | --- | --- | --- | --- | --- | --- | --- | --- | --- | --- | --- | --- | --- | --- | --- | --- | --- |
| 1 | 1 | Diagnóstico y validación inicial | 1 | 1 | True | True | 09/01/2026 09:00:00 | 09/10/2026 19:00:00 | 3840 | 8 días | 6720 | 2552000 | 0 | 0 | True | 0 |  |  |  |
| 2 | 2 | Reunión inicial con equipo y usuarios clave | 1.1 | 2 |  | True | 09/01/2026 09:00:00 | 09/01/2026 19:00:00 | 480 | 1 día | 960 | 240000 | 0 | 0 |  | 6240 | 3 | Jefe de Proyecto;Sponsor/Gerencia |  |
| 3 | 5 | Levantamiento de procesos clínicos y administrativos | 1.2 | 2 |  | True | 09/02/2026 09:00:00 | 09/04/2026 19:00:00 | 1440 | 3 días | 2880 | 1128000 | 0 | 0 |  | 6240 | 4 | Analista de procesos;Especialista Nutrición | 2 |
| 4 | 7 | Análisis de encuesta y brechas operativas | 1.3 | 2 |  | True | 09/07/2026 09:00:00 | 09/08/2026 19:00:00 | 960 | 2 días | 960 | 352000 | 0 | 0 |  | 6240 | 5 | Analista de procesos | 3 |
| 5 | 9 | Informe diagnóstico y requerimientos preliminares | 1.4 | 2 |  | True | 09/09/2026 09:00:00 | 09/10/2026 19:00:00 | 960 | 2 días | 1920 | 832000 | 0 | 0 |  | 6240 | 7 | Analista de procesos;Jefe de Proyecto | 4 |
| 6 | 10 | Diseño del sistema ERP MVP | 2 | 1 | True | True | 09/11/2026 09:00:00 | 09/22/2026 19:00:00 | 3840 | 8 días | 9120 | 3320000 | 0 | 0 | True | 0 |  |  |  |
| 7 | 11 | Definición de requerimientos funcionales | 2.1 | 2 |  | True | 09/11/2026 09:00:00 | 09/14/2026 19:00:00 | 960 | 2 días | 2880 | 1072000 | 0 | 0 |  | 6240 | 8;9 | Analista de procesos;Especialista Nutrición;Técnico Informático | 5 |
| 8 | 12 | Diseño de arquitectura modular y modelo de datos | 2.2 | 2 |  | True | 09/15/2026 09:00:00 | 09/17/2026 19:00:00 | 1440 | 3 días | 2880 | 1008000 | 0 | 0 |  | 16320 |  | Analista de procesos;Técnico Informático | 7 |
| 9 | 13 | Diseño de seguridad, cumplimiento legal y protocolos | 2.3 | 2 |  | True | 09/18/2026 09:00:00 | 09/21/2026 19:00:00 | 960 | 2 días | 1920 | 800000 | 0 | 0 |  | 4800 | 10 | Jefe de Proyecto;Técnico Informático | 7 |
| 10 | 14 | Validación de alcance y prototipo con usuarios beta | 2.4 | 2 |  | True | 09/22/2026 09:00:00 | 09/22/2026 19:00:00 | 480 | 1 día | 1440 | 440000 | 0 | 0 |  | 4800 | 12 | Especialista Nutrición;Jefe de Proyecto;Sponsor/Gerencia | 9 |
| 11 | 15 | Preparación y desarrollo del MVP | 3 | 1 | True | True | 09/23/2026 09:00:00 | 10/12/2026 19:00:00 | 6720 | 14 días | 13440 | 5838000 | 0 | 0 | True | 0 |  |  |  |
| 12 | 17 | Configuración de entorno cloud, agenda y pacientes | 3.1 | 2 |  | True | 09/23/2026 09:00:00 | 09/24/2026 19:00:00 | 960 | 2 días | 1920 | 1360000 | 0 | 0 |  | 4800 | 13 | Administrativo;Técnico Informático;Servicios Cloud Beta[1] | 10 |
| 13 | 18 | Desarrollo de módulos clínicos, agenda y pacientes | 3.2 | 2 |  | True | 09/25/2026 09:00:00 | 10/01/2026 19:00:00 | 2400 | 5 días | 4800 | 1680000 | 0 | 0 |  | 4800 | 14;17 | Analista de procesos;Técnico Informático | 12 |
| 14 | 19 | Integración IA/OCR y base de datos nutricional | 3.3 | 2 |  | True | 10/02/2026 09:00:00 | 10/07/2026 19:00:00 | 1920 | 4 días | 3840 | 1790000 | 0 | 0 |  | 8160 | 15 | Base de Datos Nutricional[1];Especialista Nutrición;Técnico Informático | 13 |
| 15 | 20 | Pruebas técnicas y preparación del ambiente beta | 3.4 | 2 |  | True | 10/08/2026 09:00:00 | 10/12/2026 19:00:00 | 1440 | 3 días | 2880 | 1008000 | 0 | 0 |  | 8160 |  | Analista de procesos;Técnico Informático | 14 |
| 16 | 21 | Capacitación y piloto beta | 4 | 1 | True | True | 10/13/2026 09:00:00 | 10/20/2026 19:00:00 | 2880 | 6 días | 5760 | 2176000 | 0 | 0 | True | 0 |  |  |  |
| 17 | 22 | Preparación de material de capacitación | 4.1 | 2 |  | True | 10/13/2026 09:00:00 | 10/14/2026 19:00:00 | 960 | 2 días | 960 | 488000 | 0 | 0 |  | 1440 | 18 | Capacitador;Impresiones Manuales[$100,000];Manuales capacitación[1] | 13 |
| 18 | 23 | Capacitación de usuarios beta de nutrición | 4.2 | 2 |  | True | 10/15/2026 09:00:00 | 10/16/2026 19:00:00 | 960 | 2 días | 2880 | 1128000 | 0 | 0 |  | 1440 | 19 | Capacitador;Especialista Nutrición;Viáticos[$200,000];Administrativo | 17 |
| 19 | 24 | Carga inicial de datos y soporte al piloto | 4.3 | 2 |  | True | 10/19/2026 09:00:00 | 10/20/2026 19:00:00 | 960 | 2 días | 1920 | 560000 | 0 | 0 |  | 1440 | 21 | Administrativo;Técnico Informático | 18 |
| 20 | 25 | Puesta en marcha y cierre | 5 | 1 | True | True | 10/21/2026 09:00:00 | 11/04/2026 19:00:00 | 5280 | 11 días | 13440 | 5160000 | 0 | 0 | True | 0 |  |  |  |
| 21 | 26 | Marcha blanca beta de NutriOne ERP | 5.1 | 2 |  | True | 10/21/2026 09:00:00 | 10/27/2026 19:00:00 | 2400 | 5 días | 7200 | 2680000 | 0 | 0 |  | 1440 | 22;23 | Analista de procesos;Especialista Nutrición;Técnico Informático | 19 |
| 22 | 27 | Corrección de incidencias prioritarias | 5.2 | 2 |  | True | 10/28/2026 09:00:00 | 10/30/2026 19:00:00 | 1440 | 3 días | 2880 | 1008000 | 0 | 0 |  | 1440 |  | Analista de procesos;Técnico Informático | 21 |
| 23 | 28 | Evaluación de resultados y viabilidad final | 5.3 | 2 |  | True | 11/02/2026 09:00:00 | 11/03/2026 19:00:00 | 960 | 2 días | 2880 | 1232000 | 0 | 0 | True | 0 | 24 | Analista de procesos;Especialista Nutrición;Jefe de Proyecto | 21 |
| 24 | 29 | Cierre del proyecto y presentación final | 5.4 | 2 |  | True | 11/04/2026 09:00:00 | 11/04/2026 19:00:00 | 480 | 1 día | 480 | 240000 | 0 | 0 | True | 0 |  | Jefe de Proyecto | 23 |
